# project.xml

Schedule from ProjectLibre, 2020-10-21 to 2020-12-10.

## Calendars

- Standard: Mon-Fri 08:00-12:00, 13:00-17:00; Sat-Sun off.

## Resources

| Resource |
| --- |
| Não atribuído |
| Vinicius |
| Luiz |
| Cliente |
| GP Externo |
| Anderson |
| Ikaro |
| Lucas |

## Schedule

| ID | WBS | Task | Duration | Start | Finish | Predecessors | Complete | Baseline start | Baseline finish | Baseline 1 start | Baseline 1 finish | Constraint | Resources |
| --- | --- | --- | --- | --- | --- | --- | --- | --- | --- | --- | --- | --- | --- |
| 1 | 1 | **Projeto Doogle** | 36.12d? | 2020-10-21 08:00 | 2020-12-10 09:00 |  | 85% | 2020-10-21 08:00 | 2020-12-09 17:00 | 2020-10-21 08:00 | 2020-12-09 17:00 |  |  |
| 2 | 1.1 | **Prospecção** | 1.01d? | 2020-10-21 08:00 | 2020-10-22 08:05 |  | 100% | 2020-10-21 08:00 | 2020-10-22 08:05 | 2020-10-21 08:00 | 2020-10-22 08:05 |  |  |
| 3 | 1.1.1 | **PTEC** | 0.56d? | 2020-10-21 08:00 | 2020-10-21 13:30 |  | 100% | 2020-10-21 08:00 | 2020-10-21 13:05 | 2020-10-21 08:00 | 2020-10-21 13:30 |  |  |
| 4 | 1.1.1.1 | Estudar domínio de aplicação | 0.31d? | 2020-10-21 08:00 | 2020-10-21 10:30 |  | 100% | 2020-10-21 08:00 | 2020-10-21 08:30 | 2020-10-21 08:00 | 2020-10-21 11:00 |  | Vinicius |
| 5 | 1.1.1.2 | Reuni-ser com o cliente | 0.25d? | 2020-10-21 08:30 | 2020-10-21 10:30 | 4 | 100% | 2020-10-21 08:30 | 2020-10-21 09:30 | 2020-10-21 08:30 | 2020-10-21 09:30 |  | Luiz |
| 6 | 1.1.1.3 | Redigir PTEC | 0.25d? | 2020-10-21 09:30 | 2020-10-21 11:30 | 5 | 100% | 2020-10-21 09:30 | 2020-10-21 11:30 | 2020-10-21 09:30 | 2020-10-21 11:30 |  | Anderson |
| 7 | 1.1.1.4 | Revisar PTEC | 0.12d? | 2020-10-21 11:30 | 2020-10-21 13:30 | 6 | 100% | 2020-10-21 11:30 | 2020-10-21 13:05 | 2020-10-21 11:30 | 2020-10-21 13:30 |  | Ikaro |
| 8 | 1.1.2 | **Estim. Prel. Tam.** | 0.25d? | 2020-10-21 13:35 | 2020-10-21 15:35 |  | 100% | 2020-10-21 13:35 | 2020-10-21 14:05 | 2020-10-21 13:35 | 2020-10-21 14:35 | start no earlier than 2020-10-21 13:35 |  |
| 9 | 1.1.2.1 | Estimar Tamanho do Projeto | 0.25d? | 2020-10-21 13:35 | 2020-10-21 15:35 | 3 | 100% | 2020-10-21 13:35 | 2020-10-21 14:05 | 2020-10-21 13:35 | 2020-10-21 14:35 |  | Lucas |
| 10 | 1.1.3 | **Estim. Prel. Cronograma e Orçamento** | 0.12d? | 2020-10-21 14:05 | 2020-10-21 15:05 |  | 100% | 2020-10-21 14:05 | 2020-10-21 15:05 | 2020-10-21 14:05 | 2020-10-21 15:05 |  |  |
| 11 | 1.1.3.1 | Elaborar Cronograma e Orçamento Preliminares | 0.12d? | 2020-10-21 14:05 | 2020-10-21 15:05 | 8 | 100% | 2020-10-21 14:05 | 2020-10-21 15:05 | 2020-10-21 14:05 | 2020-10-21 15:05 | start no earlier than 2020-10-04 08:00 | Vinicius |
| 12 | 1.1.4 | **Cronograma e Orçamento Preliminares** | 0.25d? | 2020-10-21 15:05 | 2020-10-22 08:05 |  | 100% | 2020-10-21 15:05 | 2020-10-22 08:05 | 2020-10-21 15:05 | 2020-10-22 08:05 | start no earlier than 2020-10-21 15:05 |  |
| 13 | 1.1.4.1 | Elaborar Cronograma/Orçamento Prel. | 0.12d? | 2020-10-21 15:05 | 2020-10-21 16:05 | 10 | 100% | 2020-10-21 15:05 | 2020-10-21 16:05 | 2020-10-21 15:05 | 2020-10-21 16:05 |  | Luiz |
| 14 | 1.1.4.2 | Revisar Estimativas de Orçamento Prel. | 0.12d? | 2020-10-21 16:05 | 2020-10-22 08:05 | 13 | 100% | 2020-10-21 16:05 | 2020-10-22 08:05 | 2020-10-21 16:05 | 2020-10-22 08:05 |  | Anderson |
| 15 | 1.2 | **Análise** | 3.66d? | 2020-10-22 08:05 | 2020-10-27 14:20 |  | 100% | 2020-10-22 08:05 | 2020-10-27 14:20 | 2020-10-22 08:05 | 2020-10-27 14:20 |  |  |
| 16 | 1.2.1 | **Documento de Requisitos** | 1.66d? | 2020-10-22 08:05 | 2020-10-23 14:20 |  | 100% | 2020-10-22 08:05 | 2020-10-23 14:20 | 2020-10-22 08:05 | 2020-10-23 14:20 |  |  |
| 17 | 1.2.1.1 | Reunir-se com o Cliente | 0.38d? | 2020-10-22 08:05 | 2020-10-22 11:05 | 14 | 100% | 2020-10-22 08:05 | 2020-10-22 11:05 | 2020-10-22 08:05 | 2020-10-22 11:05 |  | Ikaro |
| 18 | 1.2.1.2 | Elaborar DRE | 1.03d? | 2020-10-22 11:05 | 2020-10-23 11:20 | 17 | 100% | 2020-10-22 11:05 | 2020-10-23 11:20 | 2020-10-22 11:05 | 2020-10-23 11:20 |  | Lucas |
| 19 | 1.2.1.3 | Revisar DRE | 0.25d? | 2020-10-23 11:20 | 2020-10-23 14:20 | 18 | 100% | 2020-10-23 11:20 | 2020-10-23 13:20 | 2020-10-23 11:20 | 2020-10-23 13:20 |  | Vinicius |
| 20 | 1.2.1.4 | Submeter DRE para aprovação do Cliente | 0.12d? | 2020-10-23 13:20 | 2020-10-23 14:20 | 19 | 100% | 2020-10-23 13:20 | 2020-10-23 14:20 | 2020-10-23 13:20 | 2020-10-23 14:20 |  | Luiz |
| 21 | 1.2.2 | **MRB** | 2d? | 2020-10-23 14:20 | 2020-10-27 14:20 |  | 100% | 2020-10-23 14:20 | 2020-10-27 14:20 | 2020-10-23 14:20 | 2020-10-27 14:20 |  |  |
| 22 | 1.2.2.1 | Elaborar MRB | 1.25d? | 2020-10-23 14:20 | 2020-10-26 16:20 | 16 | 100% | 2020-10-23 14:20 | 2020-10-26 14:20 | 2020-10-23 14:20 | 2020-10-26 14:20 |  | Anderson |
| 23 | 1.2.2.2 | Revisar MRB | 1d? | 2020-10-26 14:20 | 2020-10-27 14:20 | 22 | 100% | 2020-10-26 14:20 | 2020-10-27 14:20 | 2020-10-26 14:20 | 2020-10-27 14:20 |  | Ikaro |
| 24 | 1.3 | **Projeto** | 1.44d? | 2020-10-27 14:20 | 2020-10-29 08:50 |  | 100% | 2020-10-27 14:20 | 2020-10-29 08:50 | 2020-10-27 14:20 | 2020-10-29 08:50 |  |  |
| 25 | 1.3.1 | **Diagrama de Classes** | 1.06d? | 2020-10-27 14:20 | 2020-10-28 14:50 |  | 100% | 2020-10-27 14:20 | 2020-10-28 14:50 | 2020-10-27 14:20 | 2020-10-28 14:50 |  |  |
| 26 | 1.3.1.1 | Elaborar Diagrama de Classe | 0.62d? | 2020-10-27 14:20 | 2020-10-28 10:20 | 21 | 100% | 2020-10-27 14:20 | 2020-10-28 08:20 | 2020-10-27 14:20 | 2020-10-28 08:20 |  | Vinicius |
| 27 | 1.3.1.2 | Revisar Diagrama de Classe | 0.62d? | 2020-10-28 08:20 | 2020-10-28 14:20 | 26 | 100% | 2020-10-28 08:20 | 2020-10-28 14:20 | 2020-10-28 08:20 | 2020-10-28 14:20 |  | Luiz |
| 28 | 1.3.1.3 | Atualizar MRB | 0.06d? | 2020-10-28 14:20 | 2020-10-28 14:50 | 27 | 100% | 2020-10-28 14:20 | 2020-10-28 14:50 | 2020-10-28 14:20 | 2020-10-28 14:50 |  | Vinicius |

| ID | WBS | Task | Duration | Start | Finish | Predecessors | Complete | Baseline start | Baseline finish | Baseline 1 start | Baseline 1 finish | Constraint | Resources |
| --- | --- | --- | --- | --- | --- | --- | --- | --- | --- | --- | --- | --- | --- |
| 29 | 1.3.2 | **Modelo Entidade Relacionamento** | 0.38d? | 2020-10-28 14:50 | 2020-10-29 08:50 |  | 100% | 2020-10-28 14:50 | 2020-10-29 08:50 | 2020-10-28 14:50 | 2020-10-29 08:50 |  |  |
| 30 | 1.3.2.1 | Elaborar MER | 0.25d? | 2020-10-28 14:50 | 2020-10-28 16:50 | 25 | 100% | 2020-10-28 14:50 | 2020-10-28 15:50 | 2020-10-28 14:50 | 2020-10-28 15:50 |  | Vinicius |
| 31 | 1.3.2.2 | Revisar MER | 0.25d? | 2020-10-28 15:50 | 2020-10-29 08:50 | 30 | 100% | 2020-10-28 15:50 | 2020-10-29 08:50 | 2020-10-28 15:50 | 2020-10-29 08:50 |  | Luiz |
| 32 | 1.4 | **Implementação** | 11.12d? | 2020-11-25 08:00 | 2020-12-10 09:00 |  | 100% | 2020-11-25 09:03 | 2020-12-09 17:00 | 2020-11-25 09:03 | 2020-12-09 17:00 | start no earlier than 2020-11-25 08:00 |  |
| 33 | 1.4.1 | Criar Git | 0.06d? | 2020-11-25 08:00 | 2020-11-25 08:30 |  | 100% |  |  |  |  |  |  |
| 34 | 1.4.1 | **Release 01** | 5.74d? | 2020-11-25 09:03 | 2020-12-02 15:57 |  | 100% | 2020-11-25 09:03 | 2020-12-02 15:57 | 2020-11-25 09:03 | 2020-12-02 15:57 |  |  |
| 35 | 1.4.1.1 | **Implementação** | 2d? | 2020-11-25 09:03 | 2020-11-27 09:03 |  | 100% | 2020-11-25 09:03 | 2020-11-27 09:03 | 2020-11-25 09:03 | 2020-11-27 09:03 | start no earlier than 2020-11-25 08:00 |  |
| 36 | 1.4.1.1.1 | Implementar RFS01 | 0.25d? | 2020-11-25 09:03 | 2020-11-25 11:03 | 31 | 100% | 2020-11-25 09:03 | 2020-11-25 11:03 | 2020-11-25 09:03 | 2020-11-25 11:03 | start no earlier than 2020-11-25 09:03 | Lucas |
| 37 | 1.4.1.1.2 | Implementar RFS02 | 0.25d? | 2020-11-25 11:03 | 2020-11-25 14:03 | 36 | 100% | 2020-11-25 11:03 | 2020-11-25 14:03 | 2020-11-25 11:03 | 2020-11-25 14:03 |  | Vinicius |
| 38 | 1.4.1.1.3 | Implementar RFS03 | 0.25d? | 2020-11-25 14:03 | 2020-11-25 16:03 | 37 | 100% | 2020-11-25 14:03 | 2020-11-25 16:03 | 2020-11-25 14:03 | 2020-11-25 16:03 |  | Luiz |
| 39 | 1.4.1.1.3 | Implementar RFS04 | 0.25d? | 2020-11-25 16:03 | 2020-11-26 09:03 | 38 | 100% | 2020-11-25 16:03 | 2020-11-26 09:03 | 2020-11-25 16:03 | 2020-11-26 09:03 |  | Anderson |
| 40 | 1.4.1.1.3 | Implementar RFS05 | 0.25d? | 2020-11-26 09:03 | 2020-11-26 11:03 | 39 | 100% | 2020-11-26 09:03 | 2020-11-26 11:03 | 2020-11-26 09:03 | 2020-11-26 11:03 |  | Ikaro |
| 41 | 1.4.1.1.3 | Implementar RFS06 | 0.25d? | 2020-11-26 11:03 | 2020-11-26 14:03 | 40 | 100% | 2020-11-26 11:03 | 2020-11-26 14:03 | 2020-11-26 11:03 | 2020-11-26 14:03 |  | Lucas |
| 42 | 1.4.1.1.3 | Implementar RFS07 | 0.25d? | 2020-11-26 14:03 | 2020-11-26 16:03 | 41 | 100% | 2020-11-26 14:03 | 2020-11-26 16:03 | 2020-11-26 14:03 | 2020-11-26 16:03 |  | Vinicius |
| 43 | 1.4.1.1.3 | Implementar RFS08 | 0.25d? | 2020-11-26 16:03 | 2020-11-27 09:03 | 42 | 100% | 2020-11-26 16:03 | 2020-11-27 09:03 | 2020-11-26 16:03 | 2020-11-27 09:03 |  | Luiz |
| 44 | 1.4.1.2 | **Teste** | 1.75d? | 2020-11-30 08:00 | 2020-12-01 15:00 |  | 100% | 2020-11-30 08:00 | 2020-12-02 08:06 | 2020-11-30 08:00 | 2020-12-02 08:06 | start no earlier than 2020-11-30 08:00 |  |
| 45 | 1.4.1.2.1 | Testar RFS01 | 0.25d? | 2020-11-30 08:00 | 2020-11-30 10:00 |  | 100% | 2020-11-30 08:00 | 2020-11-30 10:00 | 2020-11-30 08:00 | 2020-11-30 10:00 |  | Lucas |
| 46 | 1.4.1.2.2 | Testar RFS02 | 0.25d? | 2020-11-30 10:00 | 2020-11-30 13:00 | 45 | 100% | 2020-11-30 10:00 | 2020-11-30 13:00 | 2020-11-30 10:00 | 2020-11-30 13:00 |  | Luiz |
| 47 | 1.4.1.2.3 | Testar RFS03 | 0.25d? | 2020-11-30 12:00 | 2020-11-30 15:00 | 46 | 100% | 2020-11-30 12:00 | 2020-11-30 15:00 | 2020-11-30 12:00 | 2020-11-30 15:00 |  | Anderson |
| 48 | 1.4.1.2.3 | Testar RFS04 | 0.25d? | 2020-11-30 15:00 | 2020-11-30 17:00 | 47 | 100% | 2020-11-30 15:00 | 2020-11-30 17:00 | 2020-11-30 15:00 | 2020-11-30 17:00 |  | Ikaro |
| 49 | 1.4.1.2.3 | Testar RFS05 | 0.25d? | 2020-12-01 08:00 | 2020-12-01 10:00 | 48 | 100% | 2020-12-01 08:00 | 2020-12-01 10:00 | 2020-12-01 08:00 | 2020-12-01 10:00 |  | Vinicius |
| 50 | 1.4.1.2.3 | Testar RFS06 | 0.25d? | 2020-12-01 10:00 | 2020-12-01 13:00 | 49 | 100% | 2020-12-01 10:00 | 2020-12-01 13:00 | 2020-12-01 10:00 | 2020-12-01 13:00 | start no earlier than 2020-10-23 09:03 | Anderson |
| 51 | 1.4.1.2.3 | Testar RFS07 | 0.25d? | 2020-12-01 12:00 | 2020-12-01 15:00 | 50 | 100% | 2020-12-01 12:00 | 2020-12-01 15:00 | 2020-12-01 12:00 | 2020-12-01 15:00 | start no earlier than 2020-12-01 09:03 | Luiz |
| 52 | 1.4.2.2.8 | Atualizar Git | 0.12d? | 2020-11-30 08:00 | 2020-11-30 09:00 |  | 100% |  |  |  |  |  |  |
| 53 | 1.4.1.2.3 | Testar RFS08 | 0.25d? | 2020-12-01 15:06 | 2020-12-02 08:06 | 51 | 100% | 2020-12-01 15:06 | 2020-12-02 08:06 | 2020-12-01 15:06 | 2020-12-02 08:06 | start no earlier than 2020-12-01 15:06 | Ikaro |
| 54 | 1.4.2.4 | Atualizar DRE | 0.12d? | 2020-12-02 08:06 | 2020-12-02 09:06 | 53 | 100% | 2020-12-02 08:06 | 2020-12-02 09:06 | 2020-12-02 08:06 | 2020-12-02 09:06 | start no earlier than 2020-12-01 01:00 | Lucas |
| 55 | 1.4.2.5 | Atualizar Cronograma | 0.12d? | 2020-12-02 10:00 | 2020-12-02 11:00 | 54 | 100% | 2020-12-02 10:00 | 2020-12-02 11:00 | 2020-12-02 10:00 | 2020-12-02 11:00 | start no earlier than 2020-12-02 10:00 | Vinicius |
| 56 | 1.4.2.6 | Apresentação RE 01 | 0.03d? | 2020-12-02 15:45 | 2020-12-02 15:57 | 55 | 100% | 2020-12-02 15:45 | 2020-12-02 15:57 | 2020-12-02 15:45 | 2020-12-02 15:57 | start no earlier than 2020-12-02 15:45 | Anderson |

| ID | WBS | Task | Duration | Start | Finish | Predecessors | Complete | Baseline start | Baseline finish | Baseline 1 start | Baseline 1 finish | Constraint | Resources |
| --- | --- | --- | --- | --- | --- | --- | --- | --- | --- | --- | --- | --- | --- |
| 57 | 1.4.3 | **Release 02** | 3.12d? | 2020-12-07 08:00 | 2020-12-10 09:00 |  | 100% | 2020-12-07 08:00 | 2020-12-09 17:00 | 2020-12-07 08:00 | 2020-12-09 17:00 | start no earlier than 2020-12-05 08:00 |  |
| 58 | 1.4.3.1 | **Implementação** | 3d? | 2020-12-07 08:00 | 2020-12-09 17:00 |  | 100% | 2020-12-07 08:00 | 2020-12-09 17:00 | 2020-12-07 08:00 | 2020-12-09 17:00 | start no earlier than 2020-12-04 08:00 |  |
| 59 | 1.4.3.1.1 | Implementar RFS09 | 0.25d? | 2020-12-07 08:00 | 2020-12-07 10:00 | 56 | 100% | 2020-12-07 08:00 | 2020-12-07 10:00 | 2020-12-07 08:00 | 2020-12-07 10:00 | start no earlier than 2020-12-05 08:00 | Ikaro |
| 60 | 1.4.3.1.2 | Implementar RFS10 | 0.25d? | 2020-12-07 10:00 | 2020-12-07 13:00 | 59 | 100% | 2020-12-07 10:00 | 2020-12-07 13:00 | 2020-12-07 10:00 | 2020-12-07 13:00 |  | Luiz |
| 61 | 1.4.3.1.3 | Implementar RFS11 | 0.25d? | 2020-12-07 12:00 | 2020-12-07 15:00 | 60 | 100% | 2020-12-07 12:00 | 2020-12-07 15:00 | 2020-12-07 12:00 | 2020-12-07 15:00 |  | Vinicius |
| 62 | 1.4.3.1.4 | Implementar RFS12 | 0.25d? | 2020-12-07 15:00 | 2020-12-07 17:00 | 61 | 100% | 2020-12-07 15:00 | 2020-12-07 17:00 | 2020-12-07 15:00 | 2020-12-07 17:00 |  | Anderson |
| 63 | 1.4.3.1.5 | Implementar RFS13 | 0.25d? | 2020-12-08 08:00 | 2020-12-08 10:00 | 62 | 100% | 2020-12-08 08:00 | 2020-12-08 10:00 | 2020-12-08 08:00 | 2020-12-08 10:00 |  | Lucas |
| 64 | 1.4.3.1.6 | Implementar RFS14 | 0.25d? | 2020-12-08 10:00 | 2020-12-08 13:00 | 63 | 100% | 2020-12-08 10:00 | 2020-12-08 13:00 | 2020-12-08 10:00 | 2020-12-08 13:00 |  | Vinicius |
| 65 | 1.4.3.1.7 | **Teste** | 1.5d? | 2020-12-08 12:00 | 2020-12-09 17:00 |  | 100% | 2020-12-08 12:00 | 2020-12-09 17:00 | 2020-12-08 12:00 | 2020-12-09 17:00 | start no earlier than 2020-12-05 07:00 |  |
| 66 | 1.4.3.1.7.1 | Testar RFS09 | 0.25d? | 2020-12-08 12:00 | 2020-12-08 15:00 | 64 | 100% | 2020-12-08 12:00 | 2020-12-08 15:00 | 2020-12-08 12:00 | 2020-12-08 15:00 |  | Anderson |
| 67 | 1.4.3.1.7.2 | Testar RFS10 | 0.25d? | 2020-12-08 15:00 | 2020-12-08 17:00 | 66 | 100% | 2020-12-08 15:00 | 2020-12-08 17:00 | 2020-12-08 15:00 | 2020-12-08 17:00 |  | Ikaro |
| 68 | 1.4.3.1.7.3 | Testar RFS11 | 0.25d? | 2020-12-09 08:00 | 2020-12-09 10:00 | 67 | 100% | 2020-12-09 08:00 | 2020-12-09 10:00 | 2020-12-09 08:00 | 2020-12-09 10:00 |  | Lucas |
| 69 | 1.4.3.1.7.4 | Testar RFS12 | 0.25d? | 2020-12-09 10:00 | 2020-12-09 13:00 | 68 | 100% | 2020-12-09 10:00 | 2020-12-09 13:00 | 2020-12-09 10:00 | 2020-12-09 13:00 |  | Luiz |
| 70 | 1.4.3.1.7.5 | Testar RFS13 | 0.25d? | 2020-12-09 12:00 | 2020-12-09 15:00 | 69 | 100% | 2020-12-09 12:00 | 2020-12-09 15:00 | 2020-12-09 12:00 | 2020-12-09 15:00 |  | Ikaro |
| 71 | 1.4.3.1.7.6 | Testar RFS14 | 0.25d? | 2020-12-09 15:00 | 2020-12-09 17:00 | 70 | 100% | 2020-12-09 15:00 | 2020-12-09 17:00 | 2020-12-09 15:00 | 2020-12-09 17:00 |  | Luiz |
| 72 | 1.4.3.1.8 | Atualizar Git | 0.12d? | 2020-12-07 08:00 | 2020-12-07 09:00 |  | 100% |  |  |  |  |  |  |
| 73 | 1.4.3.1.9 | Atualizar DRE | 0.12d? | 2020-12-09 09:00 | 2020-12-09 10:00 | 74 | 100% | 2020-12-09 09:00 | 2020-12-09 10:00 | 2020-12-09 09:00 | 2020-12-09 10:00 | start no earlier than 2020-12-09 09:00 | Vinicius |
| 74 | 1.4.3.2 | Atualizar Cronograma | 0.12d? | 2020-12-10 08:00 | 2020-12-10 09:00 | 71 | 100% | 2020-12-09 08:00 | 2020-12-09 09:00 | 2020-12-09 08:00 | 2020-12-09 09:00 | start no earlier than 2020-12-09 08:00 |  |
| 75 | 1.5 | Apresentação RE 02 | 0.03d? | 2020-12-09 15:45 | 2020-12-09 15:57 |  |  | 2020-12-09 15:45 | 2020-12-09 15:57 | 2020-12-09 15:45 | 2020-12-09 15:57 | start no earlier than 2020-12-09 15:45 |  |
| 76 | 1.5 | **Monitoramento e Controle** | 1.25d? | 2020-11-04 15:09 | 2020-11-06 08:09 |  |  | 2020-11-26 16:03 | 2020-12-01 08:54 | 2020-11-26 16:03 | 2020-11-30 09:03 |  |  |
| 77 | 1.5.1 | Acompanhar Projeto | 1.25d? | 2020-11-04 15:09 | 2020-11-06 08:09 |  |  | 2020-11-26 16:03 | 2020-12-01 08:54 | 2020-11-26 16:03 | 2020-11-30 09:03 | start no earlier than 2020-11-04 15:09 | Luiz |
| 78 | 1.6 | **Gerência de Configração** | 1.5d? | 2020-11-06 08:09 | 2020-11-09 13:09 |  |  | 2020-12-01 08:54 | 2020-12-02 13:54 | 2020-11-30 09:03 | 2020-12-01 14:03 |  |  |
| 79 | 1.6.1 | Elaborar Branch | 0.88d? | 2020-11-06 08:09 | 2020-11-06 16:09 | 77 |  | 2020-12-01 08:54 | 2020-12-01 10:54 | 2020-11-30 09:03 | 2020-12-01 08:03 | start no earlier than 2020-11-06 08:09 | Vinicius |
| 80 | 1.6.2 | Realizar Merge da Branch X para a Trunk | 0.62d? | 2020-11-06 16:09 | 2020-11-09 13:09 | 79 |  | 2020-12-01 10:54 | 2020-12-02 13:54 | 2020-12-01 08:03 | 2020-12-01 14:03 |  | Anderson |
